# Project Plan

Schedule from MS Project, 2023-04-03 to 2023-07-12.

## Calendars

- Standard: Mon-Fri 08:00-12:00, 13:00-17:00; Sat-Sun off.

## Schedule

| ID | WBS | Task | Duration | Start | Finish | Predecessors | Baseline start | Baseline finish | Baseline duration | Total slack |
| --- | --- | --- | --- | --- | --- | --- | --- | --- | --- | --- |
| 1 | 1 | **Planning BI Solution** | 38d | 2023-04-03 | 2023-05-24 |  | 2023-04-24 | 2023-06-14 | 38d | 0d |
| 2 | 1.1 | Project Scope | 20d | 2023-04-03 | 2023-04-28 |  | 2023-04-24 | 2023-05-19 | 20d | 0d |
| 3 | 1.2 | Required BI Software | 20d | 2023-04-03 | 2023-04-28 |  | 2023-04-24 | 2023-05-19 | 20d | 0d |
| 4 | 1.3 | **Planning SQL Server Business Intelligence Infrastructure** | 1d | 2023-05-01 | 2023-05-01 | 2, 3 | 2023-05-22 | 2023-05-22 | 1d | 0d |
| 5 | 1.3.1 | BI Topology | 1d | 2023-05-01 | 2023-05-01 |  | 2023-05-22 | 2023-05-22 | 1d | 0d |
| 6 | 1.3.2 | Planning Data Warehouse Hardware | 1d | 2023-05-01 | 2023-05-01 |  | 2023-05-22 | 2023-05-22 | 1d | 0d |
| 7 | 1.4 | **Designing Data Warehouse** | 12d | 2023-05-02 | 2023-05-17 | 4 | 2023-05-23 | 2023-06-07 | 12d | 0d |
| 8 | 1.4.1 | **Designing Data Warehouse Logical Schema** | 10d | 2023-05-02 | 2023-05-15 |  | 2023-05-23 | 2023-06-05 | 10d | 0d |
| 9 | 1.4.1.1 | Identify business processes | 2d | 2023-05-02 | 2023-05-03 |  | 2023-05-23 | 2023-05-24 | 2d | 0d |
| 10 | 1.4.1.2 | Designing Dimension Models and Data Warehouse Tables | 2d | 2023-05-04 | 2023-05-05 | 9 | 2023-05-25 | 2023-05-26 | 2d | 6d |
| 11 | 1.4.1.3 | Data source profiling | 5d | 2023-05-04 | 2023-05-10 | 9 | 2023-05-25 | 2023-05-31 | 5d | 0d |
| 12 | 1.4.1.4 | Dimension | 3d | 2023-05-11 | 2023-05-15 | 11 | 2023-06-01 | 2023-06-05 | 3d | 0d |
| 13 | 1.4.1.5 | Fact | 3d | 2023-05-11 | 2023-05-15 | 11 | 2023-06-01 | 2023-06-05 | 3d | 0d |
| 14 | 1.4.2 | **Designing Data Warehouse Physical Implementation** | 2d | 2023-05-16 | 2023-05-17 | 8 | 2023-06-06 | 2023-06-07 | 2d | 0d |
| 15 | 1.4.2.1 | Designing File Storage | 1d | 2023-05-16 | 2023-05-16 |  | 2023-06-06 | 2023-06-06 | 1d | 0d |
| 16 | 1.4.2.2 | Partitioning | 1d | 2023-05-17 | 2023-05-17 | 15 | 2023-06-07 | 2023-06-07 | 1d | 0d |
| 17 | 1.4.2.3 | Indexes | 1d | 2023-05-17 | 2023-05-17 | 15 | 2023-06-07 | 2023-06-07 | 1d | 0d |
| 18 | 1.4.2.4 | Compression | 1d | 2023-05-17 | 2023-05-17 | 15 | 2023-06-07 | 2023-06-07 | 1d | 0d |
| 19 | 1.4.2.5 | Views | 1d | 2023-05-17 | 2023-05-17 | 15 | 2023-06-07 | 2023-06-07 | 1d | 0d |
| 20 | 1.5 | Designing ETL Solution | 5d | 2023-05-18 | 2023-05-24 | 7 | 2023-06-08 | 2023-06-14 | 5d | 0d |
| 21 | 1.6 | **Planning BI Delivery Solution** | 7d | 2023-05-16 | 2023-05-24 | 8 | 2023-06-06 | 2023-06-12 | 5d | 0d |
| 22 | 1.6.1 | Reporting Requirements | 7d | 2023-05-16 | 2023-05-24 |  | 2023-06-06 | 2023-06-12 | 5d | 0d |
| 23 | 2 | **Implementing BI Solution** | 35d | 2023-05-25 | 2023-07-12 | 1 | 2023-06-15 | 2023-07-26 | 30d | 0d |
| 24 | 2.1 | **Implementing Data Warehouse** | 5d | 2023-05-25 | 2023-05-31 |  | 2023-06-15 | 2023-06-21 | 5d | 0d |
| 25 | 2.1.1 | Implementing Data Warehouse Logical Schema | 5d | 2023-05-25 | 2023-05-31 |  | 2023-06-15 | 2023-06-21 | 5d | 0d |
| 26 | 2.1.2 | Implementing Data Warehouse Physical Implementation | 5d | 2023-05-25 | 2023-05-31 |  | 2023-06-15 | 2023-06-21 | 5d | 0d |

| ID | WBS | Task | Type | Duration | Start | Finish | Predecessors | Baseline start | Baseline finish | Baseline duration | Total slack |
| --- | --- | --- | --- | --- | --- | --- | --- | --- | --- | --- | --- |
| 27 | 2.2 | **Implementing ETL** |  | 15d | 2023-06-01 | 2023-06-21 | 24 | 2023-06-15 | 2023-07-05 | 15d | 0d |
| 28 | 2.2.1 | Implementing Integration Packages |  | 15d | 2023-06-01 | 2023-06-21 |  | 2023-06-15 | 2023-07-05 | 15d | 0d |
| 29 | 2.2.2 | Implementing DQS |  | 15d | 2023-06-01 | 2023-06-21 |  | 2023-06-15 | 2023-07-05 | 15d | 0d |
| 30 | 2.2.3 | Implementing MDS |  | 15d | 2023-06-01 | 2023-06-21 |  | 2023-06-15 | 2023-07-05 | 15d | 0d |
| 31 | 2.3 | Implementing BI delivery solution |  | 15d | 2023-06-22 | 2023-07-12 | 24, 27 | 2023-07-06 | 2023-07-26 | 15d | 0d |
| 32 | 3 | RELEASE 1 | milestone | 0d | 2023-07-12 | 2023-07-12 | 23 | 2023-07-26 | 2023-07-26 | 0d | 0d |
